How a schedule from MS Project changed from version to version. A marks actual dates.

## Version 1 (saved 2014-11-04)

Note of the change: Gerencia SVJO

| ID | WBS | Task | Duration | Start | Finish | Predecessors | Complete | Total float | Constraint |
| --- | --- | --- | --- | --- | --- | --- | --- | --- | --- |
| 1 | 1 | **Proposta** | 20d | 2014-10-03 | 2014-10-30 |  |  | 1d |  |
| 2 |  | Reunião com o cliente | 1d | 2014-10-03 | 2014-10-03 |  |  | 1.67d | start no earlier than 2014-10-03 |
| 3 |  | Proposta técnica | 1d | 2014-10-06 | 2014-10-06 | 2 |  |  |  |
| 4 |  | Validação Proposta | 1d | 2014-10-07 | 2014-10-07 | 3 |  | 1.67d | start no earlier than 2014-10-03 |
| 5 |  | Documento de Requisitos | 14d | 2014-10-08 | 2014-10-27 | 4 |  |  |  |
| 6 |  | Validação de Documento de Requisitos | 1d | 2014-10-28 | 2014-10-28 | 5 |  | 1.67d | start no earlier than 2014-10-28 |
| 7 |  | Matriz de Rastreabilidade | 2d | 2014-10-29 | 2014-10-30 | 6 |  | 1.67d |  |
| 8 | 2 | **Implementação** | 18d? | 2014-11-01 A | 2014-11-24 | 1 | 4% | 0d |  |
| 9 |  | Banco de dados Tela de Login | 1d | 2014-11-01 | 2014-11-01 | 6 |  | 14d | start no earlier than 2014-11-01 |
| 10 |  | Tela de Login | 2d | 2014-11-02 | 2014-11-03 | 9 |  | 14d |  |
| 11 |  | Banco de Dados Manter Jogos | 1d | 2014-11-01 | 2014-11-01 | 6 |  | 13d | start no earlier than 2014-11-01 |
| 12 |  | Manter Jogos | 2d | 2014-11-02 | 2014-11-03 | 11 |  | 13d | start no earlier than 2014-11-02 |
| 13 |  | Banco de Dados Manter Usuários de Sistema | 1d | 2014-11-01 | 2014-11-01 | 7 |  | 13d | start no earlier than 2014-11-01 |
| 14 |  | Manter Usuários de Sistema | 2d | 2014-11-02 | 2014-11-03 | 13 |  | 13d |  |
| 15 |  | Testes Dunit | 1d | 2014-11-04 | 2014-11-04 | 10, 12, 14 |  | 14d |  |
| 16 |  | Banco de Dados Manter Funcionários | 1d | 2014-11-05 | 2014-11-05 | 7 |  | 10d | start no earlier than 2014-11-05 |
| 17 |  | Manter Funcionários | 2d | 2014-11-06 | 2014-11-07 | 16 |  | 10d |  |
| 18 |  | Banco de Dados Empresas | 1d | 2014-11-05 | 2014-11-05 | 6 |  | 10d | start no earlier than 2014-11-05 |
| 19 |  | Mater Empresas | 2d | 2014-11-06 | 2014-11-07 | 18 |  | 10d |  |
| 20 |  | Testes Dunit | 1d | 2014-11-10 | 2014-11-10 | 19, 17 |  | 10d |  |
| 21 |  | Relatório de Jogos | 2d | 2014-11-13 | 2014-11-14 | 12 |  | 6d | start no earlier than 2014-11-13 |
| 22 |  | Relatório de Usuário de Sistema | 2d | 2014-11-13 | 2014-11-14 | 14 |  | 6d | start no earlier than 2014-11-13 |
| 23 |  | Banco de Dados Manter Vendas | 1d | 2014-11-17 A | 2014-11-17 A |  | 100% |  | start no earlier than 2014-11-02 |
| 24 |  | Manter Vendas | 2d | 2014-11-18 | 2014-11-19 | 23 |  | 0d | start no earlier than 2014-11-18 |
| 25 |  | Relatório de Vendas | 2d | 2014-11-20 | 2014-11-21 | 24 |  | 0d |  |
| 26 |  | Testes Dunit | 1d? | 2014-11-24 | 2014-11-24 | 25 |  | 0d |  |
| 27 | 3 | **Finalização** | 2d | 2014-11-25 | 2014-11-26 | 8 |  |  |  |
| 29 |  | Melhorar Interface | 2d | 2014-11-25 | 2014-11-26 |  |  | 0d | start no earlier than 2014-11-25 |

## Version 2 (saved 2014-11-04)

Note of the change: Modificação na Gerencia de projeto

Last finish stays 2014-11-26. Complete tasks 1 → 2.

Changed:

| ID | Task | Start | Finish | Complete | Total float | Other |
| --- | --- | --- | --- | --- | --- | --- |
| 1 | **Proposta** | 2014-10-03 A |  | 0% → 5% | 1d → 1.67d | baseline start none → 2014-10-03; baseline finish none → 2014-10-30 |
| 2 | Reunião com o cliente | 2014-10-03 A | 2014-10-03 A | 0% → 100% | 1.67d → none | baseline start none → 2014-10-03; baseline finish none → 2014-10-03 |
| 3 | Proposta técnica |  |  |  |  | baseline start none → 2014-10-06; baseline finish none → 2014-10-06 |
| 4 | Validação Proposta |  |  |  |  | baseline start none → 2014-10-07; baseline finish none → 2014-10-07 |
| 5 | Documento de Requisitos |  |  |  |  | baseline start none → 2014-10-08; baseline finish none → 2014-10-27 |
| 6 | Validação de Documento de Requisitos |  |  |  |  | baseline start none → 2014-10-28; baseline finish none → 2014-10-28 |
| 7 | Matriz de Rastreabilidade |  |  |  |  | baseline start none → 2014-10-29; baseline finish none → 2014-10-30 |
| 8 | **Implementação** |  |  |  |  | baseline start none → 2014-11-01; baseline finish none → 2014-11-24 |
| 9 | Banco de dados Tela de Login |  |  |  |  | baseline start none → 2014-11-01; baseline finish none → 2014-11-01 |
| 10 | Tela de Login |  |  |  |  | baseline start none → 2014-11-02; baseline finish none → 2014-11-03 |
| 11 | Banco de Dados Manter Jogos |  |  |  |  | baseline start none → 2014-11-01; baseline finish none → 2014-11-01 |
| 12 | Manter Jogos |  |  |  |  | baseline start none → 2014-11-02; baseline finish none → 2014-11-03 |
| 13 | Banco de Dados Manter Usuários de Sistema |  |  |  |  | baseline start none → 2014-11-01; baseline finish none → 2014-11-01 |
| 14 | Manter Usuários de Sistema |  |  |  |  | baseline start none → 2014-11-02; baseline finish none → 2014-11-03 |
| 15 | Testes Dunit |  |  |  |  | baseline start none → 2014-11-04; baseline finish none → 2014-11-04 |
| 16 | Banco de Dados Manter Funcionários |  |  |  |  | baseline start none → 2014-11-05; baseline finish none → 2014-11-05 |
| 17 | Manter Funcionários |  |  |  |  | baseline start none → 2014-11-06; baseline finish none → 2014-11-07 |
| 18 | Banco de Dados Empresas |  |  |  |  | baseline start none → 2014-11-05; baseline finish none → 2014-11-05 |
| 19 | Mater Empresas |  |  |  |  | baseline start none → 2014-11-06; baseline finish none → 2014-11-07 |
| 20 | Testes Dunit |  |  |  |  | baseline start none → 2014-11-10; baseline finish none → 2014-11-10 |
| 21 | Relatório de Jogos |  |  |  |  | baseline start none → 2014-11-13; baseline finish none → 2014-11-14 |
| 22 | Relatório de Usuário de Sistema |  |  |  |  | baseline start none → 2014-11-13; baseline finish none → 2014-11-14 |
| 23 | Banco de Dados Manter Vendas |  |  |  |  | baseline start none → 2014-11-17; baseline finish none → 2014-11-17 |
| 24 | Manter Vendas |  |  |  |  | baseline start none → 2014-11-18; baseline finish none → 2014-11-19 |
| 25 | Relatório de Vendas |  |  |  |  | baseline start none → 2014-11-20; baseline finish none → 2014-11-21 |
| 26 | Testes Dunit |  |  |  |  | baseline start none → 2014-11-24; baseline finish none → 2014-11-24 |
| 27 | **Finalização** |  |  |  |  | baseline start none → 2014-11-25; baseline finish none → 2014-11-26 |
| 29 | Melhorar Interface |  |  |  |  | baseline start none → 2014-11-25; baseline finish none → 2014-11-26 |

## Version 3 (saved 2014-11-11)

Note of the change: CRUD Empresas completo

Last finish stays 2014-11-26. Complete tasks 2 → 16.

Changed:

| ID | Task | Start | Finish | Complete | Total float |
| --- | --- | --- | --- | --- | --- |
| 1 | **Proposta** |  | 2014-10-30 A | 5% → 100% | 1.67d → none |
| 3 | Proposta técnica | 2014-10-06 A | 2014-10-06 A | 0% → 100% |  |
| 4 | Validação Proposta | 2014-10-07 A | 2014-10-07 A | 0% → 100% | 1.67d → none |
| 5 | Documento de Requisitos | 2014-10-08 A | 2014-10-27 A | 0% → 100% |  |
| 6 | Validação de Documento de Requisitos | 2014-10-28 A | 2014-10-28 A | 0% → 100% | 1.67d → none |
| 7 | Matriz de Rastreabilidade | 2014-10-29 A | 2014-10-30 A | 0% → 100% | 1.67d → none |
| 8 | **Implementação** |  |  | 4% → 56% |  |
| 9 | Banco de dados Tela de Login | 2014-11-01 A | 2014-11-01 A | 0% → 100% | 14d → none |
| 10 | Tela de Login | 2014-11-02 A | 2014-11-03 A | 0% → 100% | 14d → none |
| 11 | Banco de Dados Manter Jogos | 2014-11-01 A | 2014-11-01 A | 0% → 100% | 13d → none |
| 12 | Manter Jogos | 2014-11-02 A | 2014-11-03 A | 0% → 100% | 13d → none |
| 13 | Banco de Dados Manter Usuários de Sistema | 2014-11-01 A | 2014-11-01 A | 0% → 100% | 13d → none |
| 14 | Manter Usuários de Sistema | 2014-11-02 A | 2014-11-03 A | 0% → 100% | 13d → none |
| 16 | Banco de Dados Manter Funcionários | 2014-11-05 A | 2014-11-05 A | 0% → 100% | 10d → none |
| 17 | Manter Funcionários | 2014-11-06 A | 2014-11-07 A | 0% → 100% | 10d → none |
| 18 | Banco de Dados Empresas | 2014-11-05 A | 2014-11-05 A | 0% → 100% | 10d → none |
| 19 | Mater Empresas | 2014-11-06 A | 2014-11-07 A | 0% → 100% | 10d → none |
| 23 | Banco de Dados Manter Vendas | 2014-11-17 A → 2014-11-02 (-15d) | 2014-11-17 A → 2014-11-02 (-15d) | 100% → 0% | none → 11d |

## Version 4 (saved 2014-11-11)

Note of the change: (MS-Project) Gerencia do projeto

Last finish stays 2014-11-26. Complete tasks 16 → 15.

Changed:

| ID | Task | Start | Finish | Duration | Complete | Total float | Other |
| --- | --- | --- | --- | --- | --- | --- | --- |
| 8 | **Implementação** |  |  |  | 56% → 49% |  |  |
| 15 | Testes Dunit |  |  | 1d → 0.25d |  | 14d → 14.75d |  |
| 16 | Banco de Dados Manter Funcionários |  | 2014-11-05 A → 2014-11-05 | 1d → 0.25d | 100% → 50% | none → 13.75d |  |
| 17 | Manter Funcionários |  | 2014-11-07 A → 2014-11-06 A (-1d) | 2d → 0.38d |  |  |  |
| 18 | Banco de Dados Empresas |  |  | 1d → 0.25d |  |  |  |
| 19 | Mater Empresas |  | 2014-11-07 A → 2014-11-06 A (-1d) | 2d → 0.38d |  |  |  |
| 20 | Testes Dunit | 2014-11-10 → 2014-11-06 (-4d) | 2014-11-10 → 2014-11-06 (-4d) | 1d → 0d |  | 10d → 12.62d |  |
| 23 | Banco de Dados Manter Vendas | 2014-11-02 → 2014-11-17 (+15d) | 2014-11-02 → 2014-11-17 (+15d) |  |  | 11d → 0d | constraint start no earlier than 2014-11-02 → start no earlier than 2014-11-16 |
